How a schedule from an exported table changed from version to version. A marks actual dates.

## Version 1 (saved 2026-09-22)

Note of the change: Merge pull request #2 from Phuchello/chore/final-repo-cleanup

| ID | Task | Start | Finish |
| --- | --- | --- | --- |
| LG-A-001 | Đặc tả cấu trúc envelope JSON 6 trường (version, messageType, requestId, deviceId, sentAtUtc, payload) và 16 fixtures mẫu. | 1 | 2 |
| LG-A-002 | Hiện thực FrameCodec với ReadExactlyBytesAsync xử lý partial read, ghép frame, kiểm tra MaxFrameSize 256 KiB và ném EndOfStreamException khi EOF. | 2 | 3 |
| LG-A-003 | Khởi tạo kết nối TCP client tới Central Server; quản lý hàng đợi gửi tuần tự bằng Channel Bounded để đảm bảo Single Writer trên Socket. | 3 | 4 |
| LG-A-004 | Thu thập định kỳ chỉ số tài nguyên Windows bằng PerformanceCounter hoặc Win32 API; không gây nghẽn luồng thu thập. | 5 | 7 |
| LG-A-005 | Cơ chế tự động kết nối lại khi mất mạng với Exponential Backoff (1s, 2s, 4s... tối đa 30s) + Jitter 10%; tái lập phiên an toàn. | 8 | 9 |
| LG-A-006 | Hàng đợi ReplayBuffer lưu trữ tối đa 50 batches (250s dữ liệu); chỉ lưu METRIC_BATCH; FIFO Drop-Oldest; gắn cờ isReplay=true khi gửi bù; không lưu HEARTBEAT/SERVICE_STATUS. | 10 | 11 |
| LG-A-007 | Thăm dò cổng TCP nội bộ theo danh sách cấu hình (port 80, port 8080); timeout 2s mỗi cổng; báo cáo trạng thái SERVICE_STATUS. | 12 | 13 |
| LG-A-008 | Kiểm thử các kịch bản ngắt kết nối đột ngột (server crash, tắt tiến trình bằng Ctrl+C, ngắt cáp mạng); giải phóng socket an toàn không rò rỉ tài nguyên. | 14 | 15 |
| LG-A-009 | Chạy Agent trên môi trường thực tế mạng LAN phòng máy UIT hoặc kết nối tới máy chủ/dịch vụ đặt trên máy ảo Ubuntu. | 16 | 18 |
| LG-B-001 | Khởi tạo CentralServer với TcpListener lắng nghe cổng 5000; vòng lặp AcceptTcpClientAsync bất đồng bộ đón nhận client. | 1 | 3 |
| LG-B-002 | Tiếp nhận kết nối mới; xử lý gói tin HELLO_AGENT -> phản hồi HELLO_ACK; xử lý AUTH_AGENT -> phản hồi AUTH_RESULT. | 3 | 5 |
| LG-B-003 | Nhận HEARTBEAT mỗi 5s từ Agent; dùng Stopwatch đơn điệu máy chủ theo dõi; chuyển sang OFFLINE khi quá 20s (15s + 5s grace). | 6 | 8 |
| LG-B-004 | Xác thực tài khoản quản trị bằng PBKDF2; phân quyền RBAC phía server: Admin (toàn quyền), Operator (ACK, Start, Resolve), Viewer (chỉ xem). | 9 | 10 |
| LG-B-005 | Viết schema.sql tạo bảng dbo.MetricSamples và tạo DatabaseRepository.cs lưu trữ mẻ telemetry; khử trùng lặp qua batchId. | 11 | 12 |
| LG-B-006 | Bộ đánh giá vi phạm ngưỡng tài nguyên với thuật toán Hysteresis: HIGH_CPU khi >= 90% (streak 3), phục hồi khi <= 75% (streak 3); RAM >= 85%; SERVICE_DOWN. | 13 | 14 |
| LG-B-007 | Quản lý vòng đời sự cố (OPEN -> ACK -> START -> RESOLVE); kiểm soát tranh chấp lạc quan OCC bằng kiểu RowVersion 8-byte token; trả về 409 Conflict khi đè dữ liệu. | 15 | 16 |
| LG-B-008 | Cấu hình chuỗi kết nối và môi trường cô lập CSDL kiểm thử LabGuardTestDb để bộ test tự động không ghi đè vào CSDL vận hành chính. | 17 | 18 |
| LG-B-009 | Bổ sung cột AssignedToUserId trong bảng dbo.Incidents và ghi nhật ký phân công vào bảng dbo.IncidentHistory; xử lý lệnh INCIDENT_ASSIGN. | 19 | 20 |
| LG-C-001 | Xây dựng khung giao diện chính WinForms nền sáng trên DashboardForm.cs; bố trí 2 DataGridView (danh sách máy, sự cố) và cụm nút bấm. | 1 | 3 |
| LG-C-002 | Hiện thực AdminClient.cs mở Socket TCP tới Central Server (cổng 5000); gửi lệnh LOGIN và nhận phản hồi xác thực LOGIN_RESULT. | 3 | 5 |
| LG-C-003 | Đổ dữ liệu thiết bị (DeviceId, Status ONLINE/OFFLINE, CPU%, RAM%, Uptime) lên bảng DataGridView; cập nhật mượt mà qua BeginInvoke. | 6 | 8 |
| LG-C-004 | Hiển thị danh sách sự cố thời gian thực do Central Server phát sinh; tô màu cảnh báo theo mức độ nghiêm trọng. | 9 | 10 |
| LG-C-005 | Lập trình sự kiện bấm nút ACK trên dòng sự cố được chọn; gửi gói tin INCIDENT_ACK lên Central; chuyển trạng thái thành ACKNOWLEDGED. | 11 | 12 |
| LG-C-006 | Lập trình sự kiện bấm nút Start; gửi gói tin INCIDENT_START lên Central; chuyển trạng thái sự cố sang IN_PROGRESS. | 13 | 14 |
| LG-C-007 | Lập trình sự kiện bấm nút Resolve; mở dialog yêu cầu nhập ghi chú khắc phục; gửi lệnh đóng sự cố lên Central. | 15 | 16 |
| LG-C-008 | Thêm cột Người xử lý trên DataGridView sự cố; hộp thoại popup chọn kỹ thuật viên từ danh sách và gửi lệnh INCIDENT_ASSIGN. | 17 | 18 |
| LG-C-010 | Khi người dùng đăng nhập tài khoản có quyền Viewer, tự động làm mờ (Enabled=false) toàn bộ các nút tác vụ sự cố (ACK, Start, Resolve, Assign). | 19 | 20 |
| LG-C-011 | Bắt các mã lỗi canonical từ Central Server (như xung đột OCC 409 ERR_CONCURRENCY_VIOLATION, ERR_FORBIDDEN); hiển thị hộp thoại tiếng Việt thân thiện và tự động refresh dữ liệu. | 21 | 22 |
| LG-D-001 | Chạy lệnh dotnet test, đọc hiểu FrameCodec.cs và 16 file mẫu JSON trong thư mục fixtures; nắm vững cấu trúc phong bì 6 trường. | 1 | 3 |
| LG-D-002 | Tự viết một Console app nhỏ trong thư mục tools/ mở cổng Socket TCP nhận chuỗi bất kỳ rồi gửi trả lại để làm quen với Socket trong C#. | 3 | 5 |
| LG-D-003 | Viết chương trình trong tools/ nhận gói tin từ Client, cho vào BoundedChannelOptions(100) với FullMode.Wait và chuyển tiếp sang Server đích. | 6 | 8 |
| LG-D-004 | Bộ cân bằng tải L4 TCP phân phối kết nối từ nhiều Agent vào các node Central/Collector theo thuật toán Least-Connections. | 16 | 18 |
| LG-D-005 | Trạm gom dữ liệu phân tán tiếp nhận kết nối từ hàng chục máy trạm và dồn luồng về Central Server để giảm tải kết nối. | 19 | 21 |
| LG-D-006 | Phát triển công cụ LabGuard.Simulator giả lập 20–50 máy trạm gửi nhịp tim và số liệu đồng thời để kiểm tra áp lực chịu tải của hệ thống. | 22 | 24 |

## Version 2 (saved 2026-10-18)

Note of the change: chore: sync project status, team assignments and handbooks after PR 11

Added:

| ID | Task | Start | Finish |
| --- | --- | --- | --- |
| LG-D-007 | Phân công chính thức 17/10/2026: Công cụ kiểm thử truyền thông TCP và chức năng hỗ trợ phân tích, xử lý sự cố. Rà schema/DTO, dữ liệu bắt buộc và tùy chọn; thống nhất dữ liệu nội bộ cùng B/C; giữ TCP/Echo/Relay. | 3 | 5 |
| LG-D-008 | Bốn loại incident hiện có; evidence-to-recommendation, Unknown/stale, human context và workflow; không chẩn đoán hoặc sửa từ xa. | 12 | 15 |
| LG-D-009 | Thư viện C# reusable được Admin gọi; không executable riêng, không nhập lại máy, không trực tiếp SQL/Agent. | 17 | 20 |
| LG-D-010 | Phối hợp B/C chạy ca A–F trong Admin sau khi core sẵn sàng, phân biệt design/code/test evidence. | 24 | 25 |
| LG-B-010 | Phần bổ sung 2 giờ sau khi chức năng cốt lõi sẵn sàng: đối chiếu field/mapping/freshness, thiết bị/sự cố qua required messages; không bao gồm hoàn thành core thiếu. | 18 | 20 |
| LG-C-012 | Phần bổ sung 3 giờ sau khi chức năng cốt lõi sẵn sàng: nhúng logic D, bốn vùng UI và giữ handler workflow/quyền; không app riêng. | 23 | 24 |

## Version 3 (saved 2026-10-18)

Note of the change: Đồng bộ tài liệu, phân công và thuật ngữ tiếng Việt sau PR #11 (#12)

Changed:

| ID | Task | Other |
| --- | --- | --- |
| LG-D-007 | Phân công chính thức 17/10/2026: Công cụ kiểm thử truyền thông TCP và chức năng hỗ trợ phân tích, xử lý sự cố tích hợp trong LabGuard. Đối chiếu schema, cấu trúc dữ liệu trao đổi và giới hạn cùng B/C; giữ nhiệm vụ kết nối, gửi, nhận và chuyển tiếp TCP. | was named Phân công chính thức 17/10/2026: Công cụ kiểm thử truyền thông TCP và chức năng hỗ trợ phân tích, xử lý sự cố. Rà schema/DTO, dữ liệu bắt buộc và tùy chọn; thống nhất dữ liệu nội bộ cùng B/C; giữ TCP/Echo/Relay. |
| LG-D-008 | Dựa trên bốn loại sự cố trong thiết kế để đề xuất bước kiểm tra; xét dữ liệu thiếu/cũ và thông tin người quản trị cung cấp; không tự kết luận chính xác nguyên nhân hoặc sửa từ xa. | was named Bốn loại incident hiện có; evidence-to-recommendation, Unknown/stale, human context và workflow; không chẩn đoán hoặc sửa từ xa. |
| LG-D-009 | Thư viện C# dùng lại do Admin gọi, dùng thiết bị đang chọn; không tạo chương trình riêng, không truy vấn trực tiếp SQL/Agent. | was named Thư viện C# reusable được Admin gọi; không executable riêng, không nhập lại máy, không trực tiếp SQL/Agent. |
| LG-D-010 | Phối hợp B/C chạy sáu ca A–F trong Admin khi phần cốt lõi sẵn sàng; phân biệt thiết kế, mã đã viết và kiểm thử đã thực chạy. | was named Phối hợp B/C chạy ca A–F trong Admin sau khi core sẵn sàng, phân biệt design/code/test evidence. |
| LG-B-010 | Phần bổ sung 2 giờ khi phần cốt lõi sẵn sàng: đối chiếu trường dữ liệu, ánh xạ, độ mới và dữ liệu thiết bị/sự cố qua thông điệp bắt buộc; không gồm hoàn thiện phần cốt lõi còn thiếu. | was named Phần bổ sung 2 giờ sau khi chức năng cốt lõi sẵn sàng: đối chiếu field/mapping/freshness, thiết bị/sự cố qua required messages; không bao gồm hoàn thành core thiếu. |
| LG-C-012 | Phần bổ sung 3 giờ khi phần cốt lõi sẵn sàng: nhúng logic của D và bốn vùng hiển thị, giữ bộ xử lý lệnh và quyền hiện hành; không tạo ứng dụng riêng. | was named Phần bổ sung 3 giờ sau khi chức năng cốt lõi sẵn sàng: nhúng logic D, bốn vùng UI và giữ handler workflow/quyền; không app riêng. |

## Version 4 (saved 2026-10-23)

Note of the change: docs: sync ScottPlot and SQL test checkpoints into official trackers

Changed:

| ID | Task | Other |
| --- | --- | --- |
| LG-B-008 | Giữ mục tiêu tách CSDL test khỏi LabGuardDb. Bổ sung TC-01 thiết kế bộ integration test opt-in và SQL Server 2022 cô lập, TC-02 schema chuẩn, TC-03 persistence/dedup/rollback/commit-before-ACK sau mã B-005. Testcontainers 7–10 giờ công bổ sung chờ Quang rà soát, không thay 2,5 giờ lịch sử. TC-01..TC-03 CHƯA LÀM (NOT STARTED). | was named Cấu hình chuỗi kết nối và môi trường cô lập CSDL kiểm thử LabGuardTestDb để bộ test tự động không ghi đè vào CSDL vận hành chính. |
| LG-C-003 | Hiển thị DeviceId, trạng thái kết nối, CPU, RAM và Uptime; cập nhật an toàn qua UI thread. Bổ sung SC-01 thành phần biểu đồ dùng lại, SC-02 tích hợp dashboard WinForms thiết kế lại, SC-03 gắn telemetry thật sau xác thực. DashboardForm 0.1 là prototype có thể bỏ, không ràng buộc bố cục/control mới. ScottPlot 6–9 giờ công bổ sung cho cả C-003/C-004, chờ Vy rà soát, không thay giờ lịch sử hoặc cộng hai lần. | was named Đổ dữ liệu thiết bị (DeviceId, Status ONLINE/OFFLINE, CPU%, RAM%, Uptime) lên bảng DataGridView; cập nhật mượt mà qua BeginInvoke. |
| LG-C-004 | Hiển thị sự cố từ Central và ngữ cảnh thiết bị đang chọn trong Admin WinForms thiết kế lại. Phối hợp SC-02/SC-03 dùng chung với C-003, giữ quy trình quản lý sự cố hợp lệ; không phải yêu cầu tái sử dụng layout/control DashboardForm 0.1. Khoảng 6–9 giờ ScottPlot là phần bổ sung chung cho C-003/C-004 chờ Vy rà soát, không cộng lại ở task này. | was named Hiển thị danh sách sự cố thời gian thực do Central Server phát sinh; tô màu cảnh báo theo mức độ nghiêm trọng. |

## Version 5 (saved 2026-10-23)

Note of the change: docs: update Admin UI task scope in tracker

Changed:

| ID | Task | Other |
| --- | --- | --- |
| LG-C-001 | Thiết kế và triển khai giao diện nền tảng cho LabGuard.Admin bằng Windows Forms trên .NET 9. DashboardForm 0.1 chỉ là prototype có thể thay thế; không yêu cầu giữ bố cục, control, resource hoặc thiết kế cũ. Bảo đảm điều hướng rõ, màn hình theo dõi thiết bị và yêu cầu quản lý sự cố; hỗ trợ co giãn và đáp ứng, tích hợp ScottPlot về sau, tương thích hợp đồng mạng hiện hành. | was named Xây dựng khung giao diện chính WinForms nền sáng trên DashboardForm.cs; bố trí 2 DataGridView (danh sách máy, sự cố) và cụm nút bấm. |
